# 软件开发计划

Schedule from MS Project, 2017-05-15 to 2017-08-03.

## Calendars

- 标准: Mon-Fri 08:00-12:00, 13:00-17:00; Sat-Sun off. Exceptions (off unless hours are given): 2017-05-20 to 2017-05-21 08:00-12:00, 13:00-17:00, 2017-05-27 08:00-12:00, 13:00-17:00, 2017-06-04 08:00-12:00, 13:00-17:00, 2017-06-18 08:00-12:00, 13:00-17:00, 2017-06-25 08:00-12:00, 13:00-17:00, 2017-07-02 08:00-12:00, 13:00-17:00, 2017-07-08 to 2017-07-09 08:00-12:00, 13:00-17:00, 2017-07-23 08:00-12:00, 13:00-17:00.

## Resources

| Resource |
| --- |
| 管理人员 |
| 项目经理 |
| 分析人员 |
| 开发人员 |
| 测试人员 |
| 培训人员 |
| 技术联络人员 |
| 部署小组 |
| 陈晨 |
| 王宁 |
| 侯轶 |
| 王庆祥 |
| 崔云飞 |
| 高爽 |
| 柏胜 |

## Schedule

| ID | WBS | Task | Type | Duration | Start | Finish | Predecessors | Total slack | Free slack | Constraint | Resources | Work |
| --- | --- | --- | --- | --- | --- | --- | --- | --- | --- | --- | --- | --- |
| 1 | 1 | **项目范围规划** |  | 4d | 2017-05-15 | 2017-05-18 |  | 64.5d |  |  |  | 36h |
| 2 | 1.1 | 确定项目范围 |  | 4h | 2017-05-15 | 2017-05-15 |  | 64.5d | 0d |  | 陈晨 | 4h |
| 3 | 1.2 | 项目技术选型 |  | 0.5d | 2017-05-15 | 2017-05-15 | 2 | 64.5d | 0d |  | 侯轶; 王庆祥 | 8h |
| 4 | 1.3 | 定义预备资源 |  | 1d | 2017-05-16 | 2017-05-16 | 3 | 64.5d | 0d |  | 王宁 | 8h |
| 5 | 1.4 | 获得核心资源 |  | 1d | 2017-05-17 | 2017-05-17 | 4 | 64.5d | 0d |  | 王宁 | 8h |
| 6 | 1.5 | 项目开发范围完成 |  | 1d | 2017-05-18 | 2017-05-18 | 5 | 64.5d |  | finish no earlier than 2017-05-18 | 王宁 | 8h |
| 7 | 2 | **分析/软件需求** |  | 5d | 2017-05-15 | 2017-05-19 |  | 48.17d |  |  |  | 104h |
| 8 | 2.1 | 需求分析 |  | 5d | 2017-05-15 | 2017-05-19 |  | 63.5d |  | start no earlier than 2017-05-15 | 王宁 | 40h |
| 9 | 2.2 | 起草初步的软件规范 |  | 3d | 2017-05-16 | 2017-05-18 |  | 64.5d |  | finish no earlier than 2017-05-18 | 侯轶 | 24h |
| 10 | 2.3 | 前后台接口定义 |  | 1d | 2017-05-16 | 2017-05-16 |  | 47.17d | 2d | start no earlier than 2017-05-16 | 侯轶; 王庆祥 | 16h |
| 11 | 2.4 | 确定交付期限 |  | 0.5d | 2017-05-17 | 2017-05-17 |  | 65d | 0.5d | start no earlier than 2017-05-17 | 陈晨; 王宁 | 8h |
| 12 | 2.5 | 配置资源 |  | 1d | 2017-05-18 | 2017-05-18 | 11 | 64.5d |  | finish no earlier than 2017-05-18 | 陈晨; 王宁 | 16h |
| 13 | 2.6 | 分析工作完成 | milestone | 0d | 2017-05-19 | 2017-05-19 | 10 | 45.17d | 40d | start no earlier than 2017-05-19 | 王宁 |  |
| 14 | 3 | **设计** |  | 15d? | 2017-05-16 | 2017-05-31 |  | 42.5d |  |  |  | 128h |
| 15 | 3.1 | 根据功能规范开发原型 |  | 4d | 2017-05-16 | 2017-05-19 |  | 44.5d | 1d | finish no earlier than 2017-05-19 | 王宁 | 32h |
| 16 | 3.2 | 接口格式规范制定 |  | 1d? | 2017-05-21 | 2017-05-21 | 15 | 50d | 0d | finish no earlier than 2017-05-21 | 侯轶 | 8h |
| 17 | 3.3 | 技术选型 |  | 0.5d | 2017-05-22 | 2017-05-22 | 10, 16 | 50d | 0d |  | 侯轶; 王庆祥 | 8h |
| 18 | 3.4 | 开发框架搭建 |  | 1d? | 2017-05-22 | 2017-05-23 | 17 | 50d | 7.5d |  | 侯轶 | 8h |
| 19 | 3.5 | 设计工作完成 | milestone | 0d | 2017-05-31 | 2017-05-31 | 20, 18 | 42.5d | 0d | finish no earlier than 2017-05-23 | 王宁 |  |
| 20 | 3.6 | 移动端UI |  | 9d? | 2017-05-22 | 2017-05-31 | 15 | 42.5d | 0d | start no earlier than 2017-05-22 | 崔云飞 | 72h |
| 21 | 4 | **开发** |  | 31d? | 2017-05-26 | 2017-07-02 |  | 26.5d |  |  |  | 592h |
| 22 | 4.1 | 系统管理 |  | 1d | 2017-06-01 | 2017-06-01 | 19, 20 | 42.5d | 0d |  | 侯轶 | 8h |
| 23 | 4.2 | 广告管理 |  | 1d | 2017-06-02 | 2017-06-02 | 22 | 42.5d | 0d |  | 侯轶 | 8h |
| 24 | 4.3 | 用户管理 |  | 1d | 2017-06-04 | 2017-06-04 | 23 | 42.5d | 0d |  | 王庆祥 | 8h |
| 25 | 4.4 | 模版管理 |  | 10d | 2017-05-26 | 2017-06-06 |  | 47.5d |  | start no earlier than 2017-05-26 | 侯轶 | 80h |
| 26 | 4.5 | 设计管理 |  | 4d | 2017-05-27 | 2017-05-31 |  | 52.5d |  | finish no earlier than 2017-05-31 | 王庆祥 | 32h |
| 27 | 4.6 | 订单管理 |  | 7d | 2017-06-05 | 2017-06-13 | 24 | 42.5d |  | finish no earlier than 2017-06-08 | 王庆祥 | 56h |
| 28 | 4.7 | 产品单价计算 |  | 3d | 2017-06-09 | 2017-06-13 |  | 33.75d | 7.25d | finish no earlier than 2017-06-13 | 王庆祥 | 24h |
| 29 | 4.8 | 运营管理 |  | 4d | 2017-06-07 | 2017-06-12 | 19 | 43.5d |  | finish no earlier than 2017-06-12 | 侯轶 | 32h |
| 30 | 4.9 | 客服留言管理 |  | 3d | 2017-06-15 | 2017-06-18 |  | 38.5d |  | finish no earlier than 2017-06-18 | 王庆祥 | 24h |
| 31 | 4.10 | 短信平台接口开发 |  | 6d? | 2017-06-13 | 2017-06-19 |  | 36.5d | 0d | finish no earlier than 2017-06-19 | 侯轶 | 48h |
| 32 | 4.11 | 移动端版本管理 |  | 1d | 2017-06-20 | 2017-06-20 | 31 | 36.5d |  | finish no earlier than 2017-06-20 | 王庆祥 | 8h |
| 33 | 4.12 | 移动端和后台初步调试 |  | 11d | 2017-06-20 | 2017-07-02 | 28FS-7.5% | 26.5d | 0d | start no earlier than 2017-06-20 | 侯轶; 王庆祥; 高爽 | 264h |
| 34 | 4.13 | 开发工作完毕 | milestone | 0d | 2017-07-02 | 2017-07-02 | 33 | 26.5d |  |  |  |  |

| ID | WBS | Task | Type | Duration | Start | Finish | Predecessors | Total slack | Free slack | Constraint | Resources | Work |
| --- | --- | --- | --- | --- | --- | --- | --- | --- | --- | --- | --- | --- |
| 35 | 5 | **测试** |  | 27d | 2017-06-01 | 2017-07-03 |  | 25.5d |  |  |  | 368h |
| 36 | 5.1 | 根据产品规范制定单元测试计划 |  | 4d | 2017-06-01 | 2017-06-05 | 19 | 48.5d |  |  | 王宁 | 32h |
| 37 | 5.2 | 根据产品规范制定整体测试计划 |  | 4d | 2017-06-01 | 2017-06-05 | 19 | 48.5d |  | finish no earlier than 2017-05-27 | 王宁 | 32h |
| 38 | 5.3 | **单元测试** |  | 18d | 2017-06-01 | 2017-06-22 |  | 34.5d |  |  |  | 208h |
| 39 | 5.3.1 | 审阅模块化代码 |  | 5d | 2017-06-01 | 2017-06-06 |  | 47.5d |  | start no earlier than 2017-06-01 | 王宁 | 40h |
| 40 | 5.3.2 | 测试组件模块是否符合产品规范 |  | 2d | 2017-06-07 | 2017-06-08 |  | 42.5d | 0d | start no earlier than 2017-06-07 | 王宁 | 16h |
| 41 | 5.3.3 | 找出不符合产品规范的异常情况 |  | 3d | 2017-06-09 | 2017-06-13 | 40 | 42.5d |  |  | 王宁 | 24h |
| 42 | 5.3.4 | 修改代码 |  | 7d | 2017-06-13 | 2017-06-20 |  | 29d | 0d | finish no earlier than 2017-06-20 | 侯轶; 王庆祥 | 112h |
| 43 | 5.3.5 | 重新测试经过修改的代码 |  | 2d | 2017-06-21 | 2017-06-22 | 42 | 29d | 0d |  | 王宁 | 16h |
| 44 | 5.3.6 | 单元测试完成 | milestone | 0d | 2017-06-22 | 2017-06-22 | 43 | 29d | 0d |  |  |  |
| 45 | 5.4 | **整体测试** |  | 9d | 2017-06-23 | 2017-07-03 |  | 25.5d |  |  |  | 96h |
| 46 | 5.4.1 | 测试模块集成情况 |  | 2.5d | 2017-06-23 | 2017-06-26 | 44 | 29d | 0d |  | 陈晨; 王宁 | 40h |
| 47 | 5.4.2 | 找出不符合规范的异常情况 |  | 1d | 2017-06-26 | 2017-06-27 | 46 | 29d | 3.5d | finish no earlier than 2017-06-26 | 陈晨; 王宁 | 16h |
| 48 | 5.4.3 | 修改代码 |  | 1d | 2017-07-02 | 2017-07-02 | 47 | 25.5d | 0d | finish no earlier than 2017-07-02 | 高爽; 侯轶; 王庆祥 | 24h |
| 49 | 5.4.4 | 重新测试经过修改的代码 |  | 1d | 2017-07-03 | 2017-07-03 | 48 | 25.5d | 0d |  | 陈晨; 王宁 | 16h |
| 50 | 5.4.5 | 整体测试完成 | milestone | 0d | 2017-07-03 | 2017-07-03 | 49 | 25.5d |  |  | 陈晨 |  |
| 51 | 6 | **培训** |  | 19.5d | 2017-06-01 | 2017-06-25 |  | 33d |  |  |  | 160h |
| 52 | 6.1 | 制定针对产品技术支持人员的培训规范 |  | 1.5d | 2017-06-01 | 2017-06-02 | 19 | 51d |  |  | 王宁; 柏胜 | 24h |
| 53 | 6.2 | 编写培训材料 |  | 1.5w | 2017-06-15 | 2017-06-23 |  | 33d | 0d | start no earlier than 2017-06-15 | 王宁; 柏胜 | 120h |
| 54 | 6.3 | 制定培训机制 |  | 1d | 2017-06-23 | 2017-06-25 | 53 | 33d | 0d |  | 王宁; 陈晨 | 16h |
| 55 | 6.4 | 培训材料完成 | milestone | 0d | 2017-06-25 | 2017-06-25 | 54 | 33d |  |  | 柏胜; 王宁 |  |
| 56 | 7 | **试运行** |  | 15.5d | 2017-07-05 | 2017-07-23 |  | 4.67d |  |  |  | 136h |
| 57 | 7.1 | 确定测试群体 |  | 1d | 2017-07-05 | 2017-07-05 | 13 | 5.17d | 0d | start no earlier than 2017-07-05 | 陈晨 | 8h |
| 58 | 7.2 | 安装/部署软件 |  | 1.5d | 2017-07-06 | 2017-07-07 | 57 | 5.17d | 0.5d | start no earlier than 2017-07-06 | 王宁; 侯轶 | 24h |
| 59 | 7.3 | 获得用户反馈 |  | 2.4w | 2017-07-08 | 2017-07-21 | 58 | 4.67d | 0d | start no earlier than 2017-07-08 | 陈晨 | 96h |
| 60 | 7.4 | 评估测试信息 |  | 0.5d | 2017-07-23 | 2017-07-23 | 59 | 4.67d | 0d |  | 陈晨; 王宁 | 8h |
| 61 | 7.5 | 试运行工作完成 | milestone | 0d | 2017-07-23 | 2017-07-23 | 60 | 4.67d | 0d |  | 王宁 |  |

| ID | WBS | Task | Type | Duration | Start | Finish | Predecessors | Total slack | Free slack | Constraint | Resources | Work |
| --- | --- | --- | --- | --- | --- | --- | --- | --- | --- | --- | --- | --- |
| 62 | 8 | **部署** |  | 2.83d | 2017-07-23 | 2017-07-26 |  | 4.67d |  |  |  | 40h |
| 63 | 8.1 | 确定最终部署策略 |  | 0.33d | 2017-07-23 | 2017-07-23 | 61 | 4.67d | 0d |  | 柏胜; 陈晨; 王宁 | 8h |
| 64 | 8.2 | 确定部署方法 |  | 0.5d | 2017-07-23 | 2017-07-24 | 63 | 4.67d | 0d |  | 柏胜; 王宁 | 8h |
| 65 | 8.3 | 获得部署所需资源 |  | 0.5d | 2017-07-24 | 2017-07-24 | 64 | 4.67d | 0d |  | 陈晨; 王宁 | 8h |
| 66 | 8.4 | 培训技术支持人员 |  | 1d | 2017-07-24 | 2017-07-25 | 65 | 4.67d | 0d |  | 柏胜 | 8h |
| 67 | 8.5 | 部署软件 |  | 0.5d | 2017-07-25 | 2017-07-26 | 66 | 4.67d | 0d |  | 柏胜; 王宁 | 8h |
| 68 | 8.6 | 部署工作完成 | milestone | 0d | 2017-07-26 | 2017-07-26 | 67 | 4.67d |  |  |  |  |
| 69 | 9 | **实施工作结束后验收** |  | 1.5d | 2017-08-02 | 2017-08-03 |  | 0d |  |  |  | 24h |
| 70 | 9.1 | 验收计划制定 |  | 0.5d | 2017-08-02 | 2017-08-02 | 68 | 0d |  | start no earlier than 2017-08-02 | 陈晨; 王宁 | 8h |
| 71 | 9.2 | 验收工作执行 |  | 0.5d | 2017-08-02 | 2017-08-02 | 70 | 0d |  |  | 陈晨; 王宁 | 8h |
| 72 | 9.3 | 需求功能对照 |  | 0.5d | 2017-08-03 | 2017-08-03 | 71 | 0d |  |  | 陈晨; 王宁 | 8h |
| 73 | 9.4 | 初验完成 | milestone | 0d | 2017-08-03 | 2017-08-03 | 72 | 0d |  |  |  |  |
